# Upper Tamor Hydropower Project (285 MW)

Schedule from Primavera P6, 2025-01-01 to 2028-09-15, data date 2025-01-01, costs in NRS.
Must finish by 2028-07-02

## Calendars

- 7-Day Workweek: Mon-Sun 08:00-16:00.
- 24 hr 7 days: Mon-Sun 00:00-00:00.

## Resources

| Resource | Group | Unit | Rate |
| --- | --- | --- | --- |
| Concrete | material | m3 | 15000 |

## Schedule

| ID | WBS | Activity | Duration | Start | Finish | Predecessors | Total float | Free float | Constraint |
| --- | --- | --- | --- | --- | --- | --- | --- | --- | --- |
|  | I | **General/Contractual** |  | 2025-01-01 | 2025-01-14 |  |  |  |  |
| GN-1010 |  | Letter of Acceptance | 1d | 2025-01-01 | 2025-01-01 |  | 1278d | 1353d |  |
| GN-1020 |  | Submission of Performance Bank Gurantee | 14d | 2025-01-01 | 2025-01-14 |  | 1265d | 1340d |  |
| GN-1030 |  | Signing of Contract Agreement | 7d | 2025-01-01 | 2025-01-07 |  | 1272d | 0d |  |
| GN-1040 |  | Access/Possession of site | 1d | 2025-01-01 | 2025-01-01 |  | 1278d | 1353d |  |
| GN-1050 |  | Interim Arrangement of the Design consultant | 14d | 2025-01-01 | 2025-01-14 |  | 1265d | 1340d |  |
| GN-1060 |  | Release of Moblization Advance 1st Part | 10d | 2025-01-01 | 2025-01-10 |  | 1269d | 1344d |  |
| GN-1070 |  | Release of Moblization Advance 2nd Part | 10d | 2025-01-01 | 2025-01-10 |  | 1269d | 1344d |  |
| GN-1100 |  | Notice to Commence | 1d | 2025-01-01 | 2025-01-01 | GN-1030 SS | 1278d | 1353d |  |
|  | II | **Mobilization** |  | 2025-01-01 | 2028-09-15 |  |  |  |  |
|  | 1 | **Human Resources** |  | 2025-01-01 | 2028-09-15 |  |  |  |  |
|  | 1 | **Project Management Office** |  | 2025-01-01 | 2028-09-15 |  |  |  |  |
| MB-1002 |  | Project Coordinator | 1350d | 2025-01-01 | 2028-09-11 |  | -71d | 0d |  |
| MB-1000 |  | Project Manager | 1200d | 2025-06-01 | 2028-09-12 |  | -72d | 0d | start on or after 2025-06-01 |
| MB-1003 |  | Assistant PD Project Controler - 1 | 1200d | 2025-06-01 | 2028-09-12 | MB-1000 SS | -72d | 3d |  |
| MB-1001 |  | Deputy Project Manager | 1170d | 2025-07-01 | 2028-09-12 |  | -72d | 0d | start on or after 2025-07-01 |
|  | 1 | **TBM Department** |  | 2025-11-01 | 2028-09-15 |  |  |  |  |
| MB-1100 |  | TBM Tunnel Engineer | 1050d | 2025-11-01 | 2028-09-15 |  | -75d | 0d | start on or after 2025-11-01 |
| MB-1101 |  | QA/QC Engineer Casting Yard | 1050d | 2025-11-01 | 2028-09-15 | MB-1100 SS | -75d | 0d |  |
|  | 2 | **Civil Construction Department** |  | 2025-01-01 | 2028-09-12 |  |  |  |  |
| MB-1201 |  | Deputy Construction Manager-1 Powerhouse | 1350d | 2025-01-01 | 2028-09-11 |  | -71d | 0d |  |
| MB-1206 |  | Underground Engineer | 1350d | 2025-01-01 | 2028-09-11 | MB-1201 SS | -71d | 0d |  |
| MB-1207 |  | Drill & Blast Engineer - 1 | 1350d | 2025-01-01 | 2028-09-11 | MB-1206 SS | -71d | 0d |  |
| MB-1208 |  | Drill & Blast Engineer - 2 | 1350d | 2025-01-01 | 2028-09-11 | MB-1207 SS | -71d | 0d |  |
| MB-1209 |  | Tunnel Engineer - 1 | 1350d | 2025-01-01 | 2028-09-11 | MB-1208 SS | -71d | 4d |  |
| MB-1202 |  | Deputy Construction Manager-2 Dam | 1200d | 2025-06-01 | 2028-09-12 | MB-1000 SS | -72d | 3d |  |
| MB-1200 |  | Construction Manager | 1170d | 2025-07-01 | 2028-09-12 | MB-1001 SS | -72d | 0d |  |
| MB-1203 |  | Deputy Construction Manager-3 Surge Shaft & Other Component | 1170d | 2025-07-01 | 2028-09-12 | MB-1200 SS | -72d | 0d |  |
| MB-1204 |  | RCC Dam Engineer - 1 | 1170d | 2025-07-01 | 2028-09-12 | MB-1203 SS | -72d | 0d |  |
| MB-1205 |  | RCC Dam Engineer - 2 | 1170d | 2025-07-01 | 2028-09-12 | MB-1204 SS | -72d | 0d |  |
| MB-1210 |  | Tunnel Engineer - 2 | 1170d | 2025-07-01 | 2028-09-12 | MB-1205 SS | -72d | 0d |  |
| MB-1211 |  | Rebar Fabrication Yard Supervisor | 1170d | 2025-07-01 | 2028-09-12 | MB-1210 SS | -72d | 0d |  |
| MB-1212 |  | Foreman Rebar - 2 | 1170d | 2025-07-01 | 2028-09-12 | MB-1211 SS | -72d | 0d |  |
| MB-1213 |  | Foreman Formwork - 1 | 1170d | 2025-07-01 | 2028-09-12 | MB-1212 SS | -72d | 0d |  |
| MB-1214 |  | Foreman Formwork - 2 | 1170d | 2025-07-01 | 2028-09-12 | MB-1213 SS | -72d | 0d |  |
| MB-1215 |  | Foreman Concrete - 1 | 1170d | 2025-07-01 | 2028-09-12 | MB-1214 SS | -72d | 0d |  |
| MB-1216 |  | Foreman Concrete - 2 | 1170d | 2025-07-01 | 2028-09-12 | MB-1215 SS | -72d | 0d |  |
| MB-1217 |  | Excavation Foreman - 1 | 1170d | 2025-07-01 | 2028-09-12 | MB-1216 SS | -72d | 0d |  |
| MB-1218 |  | Excavation Foreman - 2 | 1170d | 2025-07-01 | 2028-09-12 | MB-1217 SS | -72d | 0d |  |
| MB-1219 |  | Rock Support Foreman - 1 | 1170d | 2025-07-01 | 2028-09-12 | MB-1218 SS | -72d | 0d |  |
| MB-1220 |  | Rock Support Foreman - 2 | 1170d | 2025-07-01 | 2028-09-12 | MB-1219 SS | -72d | 0d |  |
| MB-1221 |  | Drill & Blast Engineer - 3 | 1170d | 2025-07-01 | 2028-09-12 | MB-1220 SS | -72d | 0d |  |
| MB-1222 |  | Drill & Blast Engineer - 4 | 1170d | 2025-07-01 | 2028-09-12 | MB-1221 SS | -72d | 3d |  |

| ID | WBS | Activity | Duration | Start | Finish | Predecessors | Total float | Free float |
| --- | --- | --- | --- | --- | --- | --- | --- | --- |
|  | 3 | **Plant Department** |  | 2025-01-01 | 2028-09-12 |  |  |  |
| MB-1301 |  | Mechanical Engineer | 1350d | 2025-01-01 | 2028-09-11 | MB-1002 SS | -71d | 0d |
| MB-1304 |  | Sr. Mechanic - 2 | 1350d | 2025-01-01 | 2028-09-11 | MB-1301 SS | -71d | 4d |
| MB-1300 |  | Plant Manager | 1200d | 2025-06-01 | 2028-09-12 | MB-1000 SS | -72d | 3d |
| MB-1302 |  | Electrical Engineer | 1170d | 2025-07-01 | 2028-09-12 | MB-1001 SS | -72d | 0d |
| MB-1303 |  | Sr. Mechanic - 1 | 1170d | 2025-07-01 | 2028-09-12 | MB-1302 SS | -72d | 0d |
| MB-1305 |  | Electrical Foreman - 2 | 1170d | 2025-07-01 | 2028-09-12 | MB-1303 SS | -72d | 0d |
| MB-1306 |  | Electrical Foreman - 2 | 1170d | 2025-07-01 | 2028-09-12 | MB-1305 SS | -72d | 3d |
|  | 4 | **HSE Department** |  | 2025-01-01 | 2028-09-12 |  |  |  |
| MB-1402 |  | Safety Officer - 1 | 1350d | 2025-01-01 | 2028-09-11 |  | -71d | 4d |
| MB-1400 |  | HSE Manager | 1170d | 2025-07-01 | 2028-09-12 | MB-1001 SS | -72d | 0d |
| MB-1401 |  | Environmental Engineer | 1170d | 2025-07-01 | 2028-09-12 | MB-1400 SS | -72d | 0d |
| MB-1403 |  | Safety Officer - 2 | 1170d | 2025-07-01 | 2028-09-12 | MB-1401 SS | -72d | 3d |
|  | 5 | **Quality Assurance/Quality Control Department** |  | 2025-07-01 | 2028-09-12 |  |  |  |
| MB-1500 |  | QA/QC Manager | 1170d | 2025-07-01 | 2028-09-12 | MB-1001 SS | -72d | 0d |
| MB-1501 |  | QA/QC Engineer | 1170d | 2025-07-01 | 2028-09-12 | MB-1500 SS | -72d | 0d |
| MB-1502 |  | Material Engineer | 1170d | 2025-07-01 | 2028-09-12 | MB-1501 SS | -72d | 0d |
| MB-1503 |  | Lab-Technician - 1 | 1170d | 2025-07-01 | 2028-09-12 | MB-1502 SS | -72d | 0d |
| MB-1504 |  | Lab-Technician - 2 | 1170d | 2025-07-01 | 2028-09-12 | MB-1503 SS | -72d | 3d |
|  | 6 | **Procurement Department** |  | 2025-01-01 | 2028-09-12 |  |  |  |
| MB-1600 |  | Procurement Manager | 1350d | 2025-01-01 | 2028-09-11 | MB-1002 SS | -71d | 0d |
| MB-1601 |  | Procurement Officer | 1350d | 2025-01-01 | 2028-09-11 | MB-1600 SS | -71d | 0d |
| MB-1602 |  | Logistics | 1350d | 2025-01-01 | 2028-09-11 | MB-1601 SS | -71d | 0d |
| MB-1603 |  | Logistics | 1350d | 2025-01-01 | 2028-09-11 | MB-1602 SS | -71d | 4d |
| MB-1604 |  | Store Incharge | 1200d | 2025-06-01 | 2028-09-12 | MB-1000 SS | -72d | 3d |

| ID | WBS | Activity | Duration | Start | Finish | Predecessors | Total float | Free float | Constraint |
| --- | --- | --- | --- | --- | --- | --- | --- | --- | --- |
|  | 7 | **Technical Department** |  | 2025-01-01 | 2028-09-12 |  |  |  |  |
| MB-1702 |  | Geologist Engineer | 1350d | 2025-01-01 | 2028-09-11 | MB-1002 SS | -71d | 4d |  |
| MB-1700 |  | Chief Technical Engineer | 1215d | 2025-05-01 | 2028-08-27 |  | -56d | 0d | start on or after 2025-05-01 |
| MB-1701 |  | Technical Engineer | 1215d | 2025-05-01 | 2028-08-27 | MB-1700 SS | -56d | 19d |  |
| MB-1703 |  | Geologist Engineer | 1170d | 2025-07-01 | 2028-09-12 | MB-1001 SS | -72d | 0d |  |
| MB-1704 |  | Sr. Planning Engineer | 1170d | 2025-07-01 | 2028-09-12 | MB-1703 SS | -72d | 0d |  |
| MB-1705 |  | Structure Engineer | 1170d | 2025-07-01 | 2028-09-12 | MB-1704 SS | -72d | 0d |  |
| MB-1706 |  | Method Statement Engineer | 1170d | 2025-07-01 | 2028-09-12 | MB-1705 SS | -72d | 0d |  |
| MB-1707 |  | Instrument Engineer | 1170d | 2025-07-01 | 2028-09-12 | MB-1706 SS | -72d | 0d |  |
| MB-1708 |  | Quantity Survey/Billing Engineer | 1170d | 2025-07-01 | 2028-09-12 | MB-1707 SS | -72d | 0d |  |
| MB-1709 |  | Draftman - 1 | 1170d | 2025-07-01 | 2028-09-12 | MB-1708 SS | -72d | 3d |  |
|  | 8 | **Admin, Finance & HR Department** |  | 2025-01-01 | 2028-09-12 |  |  |  |  |
| MB-1801 |  | Admin Excrutive | 1350d | 2025-01-01 | 2028-09-11 | MB-1002 SS | -71d | 0d |  |
| MB-1802 |  | Acountant Excrutive | 1350d | 2025-01-01 | 2028-09-11 | MB-1801 SS | -71d | 0d |  |
| MB-1803 |  | Acountant Excrutive | 1350d | 2025-01-01 | 2028-09-11 | MB-1802 SS | -71d | 0d |  |
| MB-1804 |  | HR Excrutive | 1350d | 2025-01-01 | 2028-09-11 | MB-1803 SS | -71d | 4d |  |
| MB-1800 |  | Admin, Finance & HR Manager | 1170d | 2025-07-01 | 2028-09-12 | MB-1001 SS | -72d | 0d |  |
| MB-1805 |  | IT Engineer | 1170d | 2025-07-01 | 2028-09-12 | MB-1800 SS | -72d | 0d |  |
| MB-1806 |  | Document Control - 2 | 1170d | 2025-07-01 | 2028-09-12 | MB-1805 SS | -72d | 3d |  |
|  | 9 | **Survey Department** |  | 2025-01-01 | 2028-09-12 |  |  |  |  |
| MB-1900 |  | Chief Survey Manager | 1350d | 2025-01-01 | 2028-09-11 | MB-1002 SS | -71d | 0d |  |
| MB-1901 |  | Survey Supperintendent | 1350d | 2025-01-01 | 2028-09-11 | MB-1900 SS | -71d | 0d |  |
| MB-1902 |  | Survey (Team 1) | 1350d | 2025-01-01 | 2028-09-11 | MB-1901 SS | -71d | 0d |  |
| MB-1903 |  | Asst Survey (Team 1) | 1350d | 2025-01-01 | 2028-09-11 | MB-1902 SS | -71d | 4d |  |
| MB-1904 |  | Survey (Team 2) | 1170d | 2025-07-01 | 2028-09-12 | MB-1001 SS | -72d | 0d |  |
| MB-1905 |  | Asst Survey (Team 2) | 1170d | 2025-07-01 | 2028-09-12 | MB-1904 SS | -72d | 0d |  |
| MB-1906 |  | Survey (Team 3) | 1170d | 2025-07-01 | 2028-09-12 | MB-1905 SS | -72d | 0d |  |
| MB-1907 |  | Asst Survey (Team 3) | 1170d | 2025-07-01 | 2028-09-12 | MB-1906 SS | -72d | 3d |  |

| ID | WBS | Activity | Type | Duration | Start | Finish | Predecessors | Total float | Free float | Constraint |
| --- | --- | --- | --- | --- | --- | --- | --- | --- | --- | --- |
|  | 2 | **Equipment** |  |  | 2025-11-01 | 2028-07-27 |  |  |  |  |
| MB-2000 |  | Manitou Lifting Equipment |  | 1000d | 2025-11-01 | 2028-07-27 |  | -25d | 0d | start on or after 2025-11-01 |
| MB-2001 |  | Normal Shotcrete Machine |  | 1000d | 2025-11-01 | 2028-07-27 | MB-2000 SS | -25d | 50d |  |
| MB-2002 |  | Tower Crane no 1 |  | 1000d | 2025-11-01 | 2028-07-27 | MB-2000 SS | -25d | 50d |  |
| MB-2003 |  | Tower Crane no 2 |  | 1000d | 2025-11-01 | 2028-07-27 | MB-2000 SS | -25d | 50d |  |
| MB-2004 |  | Tower Crane no 3 |  | 1000d | 2025-11-01 | 2028-07-27 | MB-2000 SS | -25d | 50d |  |
| MB-2005 |  | Tower Crane no 4 |  | 1000d | 2025-11-01 | 2028-07-27 | MB-2000 SS | -25d | 50d |  |
| MB-2006 |  | Grouting Pump Machine |  | 1000d | 2025-11-01 | 2028-07-27 | MB-2000 SS | -25d | 50d |  |
| MB-2007 |  | ROC drilling Machine |  | 1000d | 2025-11-01 | 2028-07-27 | MB-2000 SS | -25d | 50d |  |
| MB-2008 |  | Shotcrete Machine |  | 1000d | 2025-11-01 | 2028-07-27 | MB-2000 SS | -25d | 50d |  |
| MB-2009 |  | Vertical Shaft Boring Machine |  | 1000d | 2025-11-01 | 2028-07-27 | MB-2000 SS | -25d | 50d |  |
|  | 3 | **Site Facilities** |  |  | 2025-01-01 | 2025-08-30 |  |  |  |  |
| MB-3000 |  | Employer's and Contractor Camp Mitlung |  | 90d | 2025-01-01 | 2025-03-31 |  | 91d | 0d |  |
| MB-3020 |  | Employer's and Contractor Camp Tapethok |  | 90d | 2025-01-01 | 2025-03-31 | MB-3000 SS | 152d |  |  |
| MB-3010 |  | Labor Camp at Surge Shaft |  | 75d | 2025-01-31 | 2025-04-15 | MB-3000 SS+30d | 1174d | 1249d |  |
| MB-3030 |  | Batching Plant 60m3/hr. at Mitlung |  | 60d | 2025-05-17 | 2025-07-15 | MB-3000 SS+45d | 0d | 1158d | finish on 2025-07-15 |
| MB-3040 |  | Crusher Plant 120TPH at Mitlung |  | 60d | 2025-05-17 | 2025-07-15 |  | 0d | 1158d | finish on 2025-07-15 |
| MB-3060 |  | Batching Plant No-2 (120m3/hr).at Tapethok |  | 60d | 2025-07-02 | 2025-08-30 | MB-3020 SS+30d, MB-3070 FF | 1037d | 0d |  |
| MB-3070 |  | Crusher Plant (100TPH)at Tapethok |  | 60d | 2025-07-02 | 2025-08-30 | MB-3020 SS+30d | 0d |  | finish on 2025-08-30 |
| MB-3050 |  | Batching Plant No-1 (60m3/hr).at Tapethok |  | 45d | 2025-07-17 | 2025-08-30 | MB-3020 SS+30d, MB-3060 FF | 1037d | 1112d |  |
|  | III | **Project Management and Monitoring** |  |  | 2025-01-01 | 2028-02-20 |  |  |  |  |
| KD-01 |  | Commencement of PMC | milestone | 0d | 2025-06-01 | 2025-06-01 |  | 0d |  | start on 2025-06-01 |
|  | PMC-PH1 | **Phase I: Pre-Construction Phase** |  |  | 2025-01-01 | 2026-02-03 |  |  |  |  |
|  | PMC-1-1 | **Project Inception and Planning** |  |  | 2025-06-01 | 2025-08-31 |  |  |  |  |
| PMC-1000 |  | Start of PMC Services (Contract Signature) |  | 0d | 2025-06-01 | 2025-06-01 |  | 133d | 0d | start on or after 2025-06-01 |
| PMC-1010 |  | Project Inception Kick-off Meeting with Client |  | 2d | 2025-06-01 | 2025-06-02 | PMC-1000 | 880d | 0d |  |
| PMC-1110 |  | Critical Review of DPR, Feasibility, ESIA & Geotechnical Reports |  | 60d | 2025-06-03 | 2025-08-01 | PMC-1010 | 880d | 0d |  |
| PMC-1120 |  | Develop Integrated Project Management Plan (PMP) |  | 90d | 2025-06-03 | 2025-08-31 | PMC-1110 SS | 880d | 0d |  |
| PMC-1121 |  | Develop Project Execution & Communication Plan |  | 45d | 2025-06-03 | 2025-07-17 | PMC-1110 SS | 1081d | 1156d |  |
| PMC-1122 |  | Develop Quality Management Plan (QMP) |  | 60d | 2025-06-03 | 2025-08-01 | PMC-1110 SS | 1066d | 1141d |  |
| PMC-1123 |  | Develop Health, Safety & Environment (HSE) Plan |  | 60d | 2025-06-03 | 2025-08-01 | PMC-1110 SS | 1066d | 1141d |  |
| PMC-1124 |  | Develop Risk Management Plan & Risk Register |  | 60d | 2025-06-03 | 2025-08-01 | PMC-1110 SS | 1066d | 1141d |  |
| PMC-1125 |  | Develop Change & Contract Management Plan |  | 45d | 2025-06-03 | 2025-07-17 | PMC-1110 SS | 1081d | 1156d |  |

| ID | WBS | Activity | Duration | Start | Finish | Predecessors | Total float | Free float |
| --- | --- | --- | --- | --- | --- | --- | --- | --- |
|  | 1 | **Work Schedules** |  | 2025-06-01 | 2025-07-15 |  |  |  |
| CP-1000 |  | Development of Work Breakdown Structure | 15d | 2025-06-01 | 2025-06-15 | KD-01 SS | 1083d | 0d |
| CP-1010 |  | Preparation of Detailed Work Schedule | 30d | 2025-06-16 | 2025-07-15 | CP-1000 | 1083d | 1158d |
|  | PMC-1-2 | **Detailed Engineering Design Review & Value Engineering** |  | 2025-01-01 | 2025-09-27 |  |  |  |
| PMC-1210 |  | Review & Approve EPC's Detailed Engineering Designs & Drawings | 270d | 2025-01-01 | 2025-09-27 |  | 1009d | 0d |
| PMC-1220 |  | Conduct Value Engineering Workshops and Studies | 30d | 2025-03-02 | 2025-03-31 | PMC-1210 SS+60d | 1189d | 1264d |
|  | PMC-1-3 | **Tendering and Contract Award Assistance** |  | 2025-09-01 | 2026-02-03 |  |  |  |
| PMC-1310 |  | Assist Client in Preparation of any remaining Tender Documents | 60d | 2025-09-01 | 2025-10-30 | PMC-1120 | 880d | 0d |
| PMC-1320 |  | Manage Bid Process (Pre-qualification, Conferences, Clarifications) | 45d | 2025-10-31 | 2025-12-14 | PMC-1310 | 880d | 0d |
| PMC-1330 |  | Lead Technical & Financial Bid Evaluation | 30d | 2025-12-15 | 2026-01-13 | PMC-1320 | 880d | 0d |
| PMC-1340 |  | Support Client in Contract Negotiations & Finalization | 21d | 2026-01-14 | 2026-02-03 | PMC-1330 | 880d | 955d |
|  | PMC-PH2 | **Phase II: Construction, Supervision, and Commissioning Phase** |  | 2025-01-01 | 2028-02-20 |  |  |  |
|  | PMC-2-1 | **Construction Supervision and Management** |  | 2025-06-01 | 2028-02-20 |  |  |  |
| PMC-2100 |  | Act as 'the Engineer' - Contract Administration (LOE) | 980d | 2025-06-01 | 2028-02-05 | PMC-PH2-START | 148d | 223d |
| PMC-2110 |  | Review & Approve Contractor's Site Mobilization Plan | 21d | 2025-06-01 | 2025-06-21 | PMC-PH2-START | 1107d | 1182d |
| PMC-2140 |  | Check & Verify Contractor's Survey and Setting Out (LOE) | 980d | 2025-06-01 | 2028-02-05 | PMC-PH2-START | 148d | 223d |
| PMC-PH2-START |  | Commencement of Construction Supervision Phase | 0d | 2025-06-01 | 2025-06-01 | PMC-1000 | 133d | 0d |
| PMC-2120 |  | Review & Approve Construction Schedules (Primavera P6) | 30d | 2025-06-16 | 2025-07-15 | PMC-PH2-START FS+15d | 133d | 0d |
| PMC-2130 |  | Monitor Progress vs Baseline & Issue Monthly Reports (LOE) | 980d | 2025-06-16 | 2028-02-20 | PMC-2120 SS | 133d | 208d |
|  | PMC-2-2 | **Quality Assurance and Quality Control (QA/QC)** |  | 2025-01-01 | 2028-02-05 |  |  |  |
| PMC-2260 |  | Supervise Factory Acceptance Tests (FAT) for HM/EM Equipment | 365d | 2025-01-01 | 2025-12-31 |  | 914d | 989d |
| PMC-2210 |  | Enforce Quality Management Plan (QMP) (LOE) | 980d | 2025-06-01 | 2028-02-05 | PMC-PH2-START | 148d | 223d |
| PMC-2220 |  | Review & Approve Contractor's QA/QC Plans and ITPs | 30d | 2025-06-01 | 2025-06-30 | PMC-PH2-START | 1098d | 1173d |
| PMC-2240 |  | Inspect & Approve Materials/Equipment at Site (LOE) | 980d | 2025-06-01 | 2028-02-05 | PMC-PH2-START | 148d | 223d |
| PMC-2250 |  | Supervise & Witness On-site Laboratory and Field Tests (LOE) | 980d | 2025-06-01 | 2028-02-05 | PMC-PH2-START | 148d | 223d |
| PMC-2270 |  | Manage Non-Conformance Reports (NCRs) (LOE) | 980d | 2025-06-01 | 2028-02-05 | PMC-PH2-START | 148d | 223d |
| PMC-2230 |  | Approve Concrete and Shotcrete Mix Designs | 45d | 2025-10-25 | 2025-12-08 | MS-2I-2103-A SS | 937d | 1012d |

| ID | WBS | Activity | Duration | Start | Finish | Predecessors | Total float | Free float |
| --- | --- | --- | --- | --- | --- | --- | --- | --- |
|  | PMC-2-3 | **Contract, Cost, and Claims Management** |  | 2025-06-01 | 2028-02-05 |  |  |  |
| PMC-2310 |  | Review & Certify Contractor's Interim Payment Certificates (IPCs) | 980d | 2025-06-01 | 2028-02-05 | PMC-PH2-START | 148d | 0d |
| PMC-2320 |  | Maintain Cost Control System & Forecast EAC (LOE) | 980d | 2025-06-01 | 2028-02-05 | PMC-2310 SS | 148d | 223d |
| PMC-2330 |  | Manage Variation and Change Control Process (LOE) | 980d | 2025-06-01 | 2028-02-05 | PMC-2310 SS | 148d | 223d |
| PMC-2340 |  | Assess Contractor Claims (EOT & Cost) and provide recommendations (LOE) | 980d | 2025-06-01 | 2028-02-05 | PMC-2310 SS | 148d | 223d |
|  | PMC-2-4 | **HSE and Social Management** |  | 2025-06-01 | 2028-02-05 |  |  |  |
| PMC-2410 |  | Supervise Contractor's Adherence to HSE Plan (LOE) | 980d | 2025-06-01 | 2028-02-05 | PMC-PH2-START | 148d | 0d |
| PMC-2420 |  | Conduct Regular Safety Audits & Promote Safety Culture (LOE) | 980d | 2025-06-01 | 2028-02-05 | PMC-2410 SS | 148d | 223d |
| PMC-2430 |  | Investigate and Report all HSE Incidents (LOE) | 980d | 2025-06-01 | 2028-02-05 | PMC-2410 SS | 148d | 223d |
| PMC-2440 |  | Monitor Implementation of ESMP and RAP (LOE) | 980d | 2025-06-01 | 2028-02-05 | PMC-2410 SS | 148d | 0d |
| PMC-2450 |  | Manage Grievance Redressal Mechanism (GRM) & Stakeholder Liaison (LOE) | 980d | 2025-06-01 | 2028-02-05 | PMC-2440 SS | 148d | 223d |
|  | PMC-2-5 | **Testing, Commissioning, and Handover** |  | 2025-01-01 | 2025-03-02 |  |  |  |
| PMC-2510 |  | Review & Approve Commissioning Plans and Protocols | 45d | 2025-01-01 | 2025-02-14 |  | 1234d | 1309d |
| PMC-2520 |  | Supervise Pre-commissioning and Commissioning Activities | 61d | 2025-01-01 | 2025-03-02 |  | 1218d | 1293d |
| PMC-2530 |  | Supervise and Certify Performance Guarantee (PG) Tests | 21d | 2025-01-01 | 2025-01-21 |  | 1258d | 1333d |
| PMC-2540 |  | Prepare Punch List and Issue Taking-Over Certificate | 14d | 2025-01-01 | 2025-01-14 |  | 540d | 0d |
|  | PMC-PH3 | **Phase III: Post-Construction Phase** |  | 2025-01-15 | 2027-01-09 |  |  |  |
|  | PMC-3-1 | **Defects Liability Period (DLP) Management** |  | 2025-01-15 | 2026-01-14 |  |  |  |
| PMC-3110 |  | Periodic Inspections during Defects Liability Period (LOE) | 365d | 2025-01-15 | 2026-01-14 | PMC-PH3-START | 540d | 0d |
| PMC-3120 |  | Notify & Supervise Rectification of Defects (LOE) | 365d | 2025-01-15 | 2026-01-14 | PMC-3110 SS | 900d | 975d |
| PMC-PH3-START |  | Commencement of Defects Liability Period | 0d | 2025-01-15 | 2025-01-15 | PMC-2540 | 540d | 0d |
|  | PMC-3-2 | **Project Close-out and Final Documentation** |  | 2026-01-15 | 2027-01-09 |  |  |  |
| PMC-3240 |  | Final Inspection at end of DLP | 14d | 2026-01-15 | 2026-01-28 | PMC-3110 | 805d | 0d |
| PMC-3250 |  | Issue Performance / Final Acceptance Certificate | 0d | 2026-01-29 | 2026-01-29 | PMC-3240 | 805d | 0d |
| PMC-3260 |  | Assist Client in Final Account Settlement | 45d | 2026-01-29 | 2026-03-14 | PMC-3250 | 805d | 0d |
| PMC-3270 |  | Prepare and Submit Project Completion Report (PCR) | 60d | 2026-01-29 | 2026-03-29 | PMC-3260 SS | 805d | 0d |
| PMC-3280 |  | Final Archiving and Handover of all Project Documents | 21d | 2026-03-30 | 2026-04-19 | PMC-3270 | 805d | 880d |
| PMC-3210 |  | Review and Approve "As-Built" Documentation | 90d | 2026-09-12 | 2026-12-10 | PMC-3110 FS+240d | 570d | 645d |
| PMC-3220 |  | Review and Approve O&M Manuals | 90d | 2026-09-12 | 2026-12-10 | PMC-3110 FS+240d | 540d | 0d |
| PMC-3230 |  | Supervise and Certify O&M Personnel Training | 30d | 2026-12-11 | 2027-01-09 | PMC-3220 | 540d | 615d |

| ID | WBS | Activity | Duration | Start | Finish | Predecessors | Total float | Free float | Constraint |
| --- | --- | --- | --- | --- | --- | --- | --- | --- | --- |
|  | IV | **IFC and MS** |  | 2025-01-01 | 2026-03-20 |  |  |  |  |
|  | IFC-DRW | **IFC Drawings** |  | 2025-01-01 | 2026-02-13 |  |  |  |  |
|  | IFC-LOT2I | **IFC Drawings - Headworks (LOT 2-I)** |  | 2025-06-01 | 2025-10-23 |  |  |  |  |
| IFC-2101 |  | Issuance of IFC for Cofferdam & River Diversion Works | 20d | 2025-06-01 | 2025-06-20 |  | 937d | 0d | start on or after 2025-06-01 |
| IFC-2104 |  | Issuance of IFC for Intake & Gravel Trap (Excavation & Foundation) | 15d | 2025-06-11 | 2025-06-25 | IFC-2101 SS+10d | 983d | 0d |  |
| IFC-2110 |  | Issuance of IFC for Headpond & CFRD (Excavation & Embankment) | 20d | 2025-06-21 | 2025-07-10 | IFC-2101 | 993d | 0d |  |
| IFC-2105 |  | Issuance of IFC for Intake & Gravel Trap (Structural Concrete) | 30d | 2025-06-26 | 2025-07-25 | IFC-2104 | 983d | 0d |  |
| IFC-2102 |  | Issuance of IFC for Barrage & Undersluice (Foundation & Micro-piling) | 30d | 2025-07-21 | 2025-08-19 | IFC-2101 FS+30d | 937d | 0d |  |
| IFC-2107 |  | Issuance of IFC for Approach Culvert & Settling Basin (Excavation & Foundation) | 15d | 2025-07-26 | 2025-08-09 | IFC-2105 | 983d | 0d |  |
| IFC-2111 |  | Issuance of IFC for Headpond Lining & Bypass Pipe | 30d | 2025-08-10 | 2025-09-08 | IFC-2110 FS+30d | 993d | 0d |  |
| IFC-2103 |  | Issuance of IFC for Barrage & Undersluice (Structural Concrete) | 45d | 2025-08-20 | 2025-10-03 | IFC-2102 SS+30d | 937d | 0d |  |
| IFC-2106 |  | Issuance of IFC for Left Bank Flood Walls (All Sections) | 30d | 2025-08-20 | 2025-09-18 | IFC-2102 | 1018d | 1093d |  |
| IFC-2108 |  | Issuance of IFC for Approach Culvert & Settling Basin (Structural Concrete) | 20d | 2025-08-20 | 2025-09-08 | IFC-2107 FS+10d | 983d | 0d |  |
| IFC-2109 |  | Issuance of IFC for Energy Dissipator | 45d | 2025-09-09 | 2025-10-23 | IFC-2108 | 983d | 1058d |  |
|  | IFC-LOT2III | **IFC Drawings - Penstock & Surge (LOT 2-III)** |  | 2025-04-30 | 2025-11-13 |  |  |  |  |
| IFC-2221 |  | Issuance of IFC for Horizontal Penstock Shaft (Excavation & Support) | 30d | 2025-04-30 | 2025-05-29 | IFC-3501 | 1086d | 0d |  |
| IFC-2222 |  | Issuance of IFC for Horizontal Penstock Shaft (Steel Liner & Concrete) | 15d | 2025-05-30 | 2025-06-13 | IFC-2221 | 1086d | 0d |  |
| IFC-2201 |  | Issuance of IFC for Surge Shaft (Excavation & Support) | 30d | 2025-08-01 | 2025-08-30 |  | 920d | 0d | start on or after 2025-08-01 |
| IFC-2202 |  | Issuance of IFC for Surge Shaft (Concrete Lining) | 30d | 2025-08-31 | 2025-09-29 | IFC-2201 | 972d | 0d |  |
| IFC-2211 |  | Issuance of IFC for Vertical Pressure Shaft (Excavation & Support) | 45d | 2025-08-31 | 2025-10-14 | IFC-2201 | 920d | 0d |  |
| IFC-2212 |  | Issuance of IFC for Vertical Pressure Shaft (Steel Liner & Concrete) | 30d | 2025-10-15 | 2025-11-13 | IFC-2211 | 920d | 0d |  |
|  | IFC-LOT2IV | **IFC Drawings - Powerhouse & Auxiliary (LOT 2-IV)** |  | 2025-03-31 | 2025-10-16 |  |  |  |  |
| IFC-3101 |  | Issuance of IFC for Ventilation Tunnel (Excavation & Support) | 30d | 2025-03-31 | 2025-04-29 | IFC-4211 | 961d | 0d |  |
| IFC-3501 |  | Issuance of IFC for Access Tunnel to Penstock (Excavation & Support) | 30d | 2025-03-31 | 2025-04-29 | IFC-4211 | 1086d | 0d |  |
| IFC-3201 |  | Issuance of IFC for Powerhouse Cavern (Excavation & Primary Support) | 30d | 2025-04-30 | 2025-05-29 | IFC-3101 | 961d | 0d |  |
| IFC-3301 |  | Issuance of IFC for Transformer Cavern (Excavation & Primary Support) | 40d | 2025-04-30 | 2025-06-08 | IFC-3201 SS | 961d | 0d |  |
| IFC-3202 |  | Issuance of IFC for Powerhouse Cavern (Crane Beam & Arch Concrete) | 40d | 2025-05-30 | 2025-07-08 | IFC-3201 | 1018d | 0d |  |
| IFC-3302 |  | Issuance of IFC for Transformer Cavern (Structural Concrete) | 45d | 2025-06-09 | 2025-07-23 | IFC-3301 | 961d | 0d |  |
| IFC-3203 |  | Issuance of IFC for Powerhouse Cavern (Substructure & Draft Tube Concrete) | 30d | 2025-07-09 | 2025-08-07 | IFC-3202 | 1018d | 0d |  |
| IFC-3401 |  | Issuance of IFC for Cable Tunnel (Excavation & Lining) | 30d | 2025-07-24 | 2025-08-22 | IFC-3302 | 961d | 0d |  |
| IFC-3601 |  | Issuance of IFC for Drainage Gallery (Excavation & Lining) | 25d | 2025-08-23 | 2025-09-16 | IFC-3401 | 961d | 0d |  |
| IFC-3701 |  | Issuance of IFC for Escape Tunnel (Excavation & Lining) | 30d | 2025-09-17 | 2025-10-16 | IFC-3601 | 961d | 0d |  |

| ID | WBS | Activity | Duration | Start | Finish | Predecessors | Total float | Free float | Constraint |
| --- | --- | --- | --- | --- | --- | --- | --- | --- | --- |
|  | IFC-LOT2V | **IFC Drawings - Access & Tailrace Tunnels (LOT 2-V)** |  | 2025-03-01 | 2026-02-13 |  |  |  |  |
| IFC-4201 |  | Issuance of IFC for Tailrace Tunnel (Portal & Excavation Support) | 30d | 2025-03-01 | 2025-03-30 |  | 835d | 0d | start on or after 2025-03-01 |
| IFC-4211 |  | Issuance of IFC for Main Access Tunnel (Portal & Excavation Support) | 30d | 2025-03-01 | 2025-03-30 | IFC-4201 SS | 835d | 0d |  |
| IFC-4202 |  | Issuance of IFC for Tailrace Tunnel (Concrete Lining & Outlet Works) | 20d | 2025-03-31 | 2025-04-19 | IFC-4201 | 1135d | 0d |  |
| IFC-4212 |  | Issuance of IFC for Main Access Tunnel (Final Lining & Pavement) | 20d | 2026-01-25 | 2026-02-13 | IFC-4211 FS+300d | 835d | 0d |  |
|  | IFC-LOT3 | **IFC Drawings - Hydromechanical Works** |  | 2025-01-01 | 2025-11-26 |  |  |  |  |
| IFC-5101 |  | Approval of HM Design for Intake & Undersluice Gates | 60d | 2025-01-01 | 2025-03-01 |  | 907d | 0d |  |
| IFC-5102 |  | Approval of HM Design for Settling Basin & Headpond Gates | 60d | 2025-05-31 | 2025-07-29 | IFC-5101 FS+90d | 907d | 0d |  |
| IFC-5201 |  | Approval of HM Design for Penstock Pipes & Manifolds | 60d | 2025-09-28 | 2025-11-26 | IFC-5102 FS+60d | 907d | 0d |  |
|  | IFC-LOT4 | **IFC Drawings - Electromechanical Works** |  | 2025-01-01 | 2025-09-27 |  |  |  |  |
| IFC-6002 |  | Approval of EM Design for Powerhouse Cranes | 45d | 2025-01-01 | 2025-02-14 |  | 967d | 0d |  |
| IFC-6001 |  | Approval of EM Design for Turbine & Generator | 45d | 2025-03-17 | 2025-04-30 | IFC-6002 FS+30d | 967d | 0d |  |
| IFC-6003 |  | Approval of EM Design for Transformers & Switchgear | 60d | 2025-05-31 | 2025-07-29 | IFC-6001 FS+30d | 967d | 0d |  |
| IFC-6004 |  | Approval of EM Design for Balance of Plant (BOP) | 30d | 2025-08-29 | 2025-09-27 | IFC-6003 FS+30d | 967d | 0d |  |
|  | IFC-LOT5 | **IFC Drawings - Transmission Line (LOT 5)** |  | 2025-01-01 | 2025-08-28 |  |  |  |  |
| IFC-2501 |  | Issuance of IFC for Transmission Line (Foundations & Access) | 60d | 2025-01-01 | 2025-03-01 |  | 1010d | 0d |  |
| IFC-2502 |  | Issuance of IFC for Transmission Line (Tower & Stringing Details) | 90d | 2025-05-31 | 2025-08-28 | IFC-2501 FS+90d | 1010d | 0d |  |
|  | MS | **Method Statements** |  | 2025-02-15 | 2026-03-20 |  |  |  |  |
|  | MS-LOT2I | **Method Statements - Headworks (LOT 2-I)** |  | 2025-06-21 | 2025-11-14 |  |  |  |  |
| MS-2I-2101-S |  | Submission of MS for Cofferdam & River Diversion | 21d | 2025-06-21 | 2025-07-11 | IFC-2101 | 1073d | 0d |  |
| MS-2I-2104-S |  | Submission of MS for Intake & Gravel Trap Foundations | 21d | 2025-06-26 | 2025-07-16 | IFC-2104 | 1068d | 0d |  |
| MS-2I-2110-S |  | Submission of MS for Headpond & CFRD Embankment | 21d | 2025-07-11 | 2025-07-31 | IFC-2110 | 1046d | 0d |  |
| MS-2I-2101-A |  | Approval of MS for Cofferdam & River Diversion | 14d | 2025-07-12 | 2025-07-25 | MS-2I-2101-S | 1073d | 1148d |  |
| MS-2I-2104-A |  | Approval of MS for Intake & Gravel Trap Foundations | 14d | 2025-07-17 | 2025-07-30 | MS-2I-2104-S | 1068d | 1143d |  |
| MS-2I-2105-S |  | Submission of MS for Intake & Gravel Trap Concrete | 21d | 2025-07-26 | 2025-08-15 | IFC-2105 | 1031d | 0d |  |
| MS-2I-2110-A |  | Approval of MS for Headpond & CFRD Embankment | 21d | 2025-08-01 | 2025-08-21 | MS-2I-2110-S | 1046d | 1121d |  |
| MS-2I-2107-S |  | Submission of MS for Settling Basin Excavation & Foundations | 21d | 2025-08-10 | 2025-08-30 | IFC-2107 | 1023d | 0d |  |
| MS-2I-2105-A |  | Approval of MS for Intake & Gravel Trap Concrete | 21d | 2025-08-16 | 2025-09-05 | MS-2I-2105-S | 1031d | 1106d |  |
| MS-2I-2102-S |  | Submission of MS for Barrage & Undersluice Foundations | 21d | 2025-08-20 | 2025-09-09 | IFC-2102 | 1013d | 0d |  |
| MS-2I-2107-A |  | Approval of MS for Settling Basin Excavation & Foundations | 14d | 2025-08-31 | 2025-09-13 | MS-2I-2107-S | 1023d | 1098d |  |
| MS-2I-2108-S |  | Submission of MS for Settling Basin Structural Concrete | 21d | 2025-09-09 | 2025-09-29 | IFC-2108 | 986d | 0d |  |
| MS-2I-2111-S |  | Submission of MS for Headpond Lining & Bypass Pipe | 21d | 2025-09-09 | 2025-09-29 | IFC-2111 | 993d | 0d |  |
| MS-2I-2102-A |  | Approval of MS for Barrage & Undersluice Foundations | 14d | 2025-09-10 | 2025-09-23 | MS-2I-2102-S | 1013d | 1088d |  |
| MS-2I-2108-A |  | Approval of MS for Settling Basin Structural Concrete | 21d | 2025-09-30 | 2025-10-20 | MS-2I-2108-S | 986d | 1061d |  |
| MS-2I-2111-A |  | Approval of MS for Headpond Lining & Bypass Pipe | 14d | 2025-09-30 | 2025-10-13 | MS-2I-2111-S | 993d | 1068d |  |
| MS-2I-2103-S |  | Submission of MS for Barrage & Undersluice Concrete | 21d | 2025-10-04 | 2025-10-24 | IFC-2103 | 937d | 0d |  |
| MS-2I-2103-A |  | Approval of MS for Barrage & Undersluice Concrete | 21d | 2025-10-25 | 2025-11-14 | MS-2I-2103-S | 937d | 0d |  |

| ID | WBS | Activity | Duration | Start | Finish | Predecessors | Total float | Free float |
| --- | --- | --- | --- | --- | --- | --- | --- | --- |
|  | MS-LOT2III | **Method Statements - Penstock & Surge (LOT 2-III)** |  | 2025-05-30 | 2025-12-25 |  |  |  |
| MS-2III-2221-S |  | Submission of MS for Horizontal Penstock Excavation | 15d | 2025-05-30 | 2025-06-13 | IFC-2221 | 1101d | 0d |
| MS-2III-2221-A |  | Approval of MS for Horizontal Penstock Excavation | 14d | 2025-06-14 | 2025-06-27 | MS-2III-2221-S | 1101d | 1176d |
| MS-2III-2222-S |  | Submission of MS for HPS Steel Liner & Concrete | 15d | 2025-06-14 | 2025-06-28 | IFC-2222 | 1086d | 0d |
| MS-2III-2222-A |  | Approval of MS for HPS Steel Liner & Concrete | 14d | 2025-06-29 | 2025-07-12 | MS-2III-2222-S | 1086d | 1161d |
| MS-2III-2201-S |  | Submission of MS for Surge Shaft Excavation | 21d | 2025-08-31 | 2025-09-20 | IFC-2201 | 1002d | 0d |
| MS-2III-2201-A |  | Approval of MS for Surge Shaft Excavation | 14d | 2025-09-21 | 2025-10-04 | MS-2III-2201-S | 1002d | 1077d |
| MS-2III-2202-S |  | Submission of MS for Surge Shaft Lining | 21d | 2025-09-30 | 2025-10-20 | IFC-2202 | 972d | 0d |
| MS-2III-2211-S |  | Submission of MS for Vertical Pressure Shaft Excavation | 21d | 2025-10-15 | 2025-11-04 | IFC-2211 | 957d | 0d |
| MS-2III-2202-A |  | Approval of MS for Surge Shaft Lining | 14d | 2025-10-21 | 2025-11-03 | MS-2III-2202-S | 972d | 1047d |
| MS-2III-2211-A |  | Approval of MS for Vertical Pressure Shaft Excavation | 14d | 2025-11-05 | 2025-11-18 | MS-2III-2211-S | 957d | 1032d |
| MS-2III-2212-S |  | Submission of MS for VPS Steel Liner & Concrete | 21d | 2025-11-14 | 2025-12-04 | IFC-2212 | 920d | 0d |
| MS-2III-2212-A |  | Approval of MS for VPS Steel Liner & Concrete | 21d | 2025-12-05 | 2025-12-25 | MS-2III-2212-S | 920d | 995d |
|  | MS-LOT2IV | **Method Statements - Powerhouse & Auxiliary (LOT 2-IV)** |  | 2025-04-30 | 2025-11-14 |  |  |  |
| MS-2IV-3101-S |  | Submission of MS for Ventilation Tunnel | 15d | 2025-04-30 | 2025-05-14 | IFC-3101 | 1131d | 0d |
| MS-2IV-3501-S |  | Submission of MS for Access Tunnel to Penstock | 21d | 2025-04-30 | 2025-05-20 | IFC-3501 | 1125d | 0d |
| MS-2IV-3101-A |  | Approval of MS for Ventilation Tunnel | 14d | 2025-05-15 | 2025-05-28 | MS-2IV-3101-S | 1131d | 1206d |
| MS-2IV-3501-A |  | Approval of MS for Access Tunnel to Penstock | 14d | 2025-05-21 | 2025-06-03 | MS-2IV-3501-S | 1125d | 1200d |
| MS-2IV-3201-S |  | Submission of MS for Powerhouse Cavern Excavation | 21d | 2025-05-30 | 2025-06-19 | IFC-3201 | 1095d | 0d |
| MS-2IV-3301-S |  | Submission of MS for Transformer Cavern Excavation | 21d | 2025-06-09 | 2025-06-29 | IFC-3301 | 1085d | 0d |
| MS-2IV-3201-A |  | Approval of MS for Powerhouse Cavern Excavation | 14d | 2025-06-20 | 2025-07-03 | MS-2IV-3201-S | 1095d | 1170d |
| MS-2IV-3301-A |  | Approval of MS for Transformer Cavern Excavation | 14d | 2025-06-30 | 2025-07-13 | MS-2IV-3301-S | 1085d | 1160d |
| MS-2IV-3202-S |  | Submission of MS for PHC Crane Beam & Arch Concrete | 21d | 2025-07-09 | 2025-07-29 | IFC-3202 | 1055d | 0d |
| MS-2IV-3302-S |  | Submission of MS for TC Structural Concrete | 21d | 2025-07-24 | 2025-08-13 | IFC-3302 | 1040d | 0d |
| MS-2IV-3202-A |  | Approval of MS for PHC Crane Beam & Arch Concrete | 14d | 2025-07-30 | 2025-08-12 | MS-2IV-3202-S | 1055d | 1130d |
| MS-2IV-3203-S |  | Submission of MS for PHC Substructure & Draft Tube Concrete | 21d | 2025-08-08 | 2025-08-28 | IFC-3203 | 1018d | 0d |
| MS-2IV-3302-A |  | Approval of MS for TC Structural Concrete | 14d | 2025-08-14 | 2025-08-27 | MS-2IV-3302-S | 1040d | 1115d |
| MS-2IV-3401-S |  | Submission of MS for Cable Tunnel | 15d | 2025-08-23 | 2025-09-06 | IFC-3401 | 1016d | 0d |
| MS-2IV-3203-A |  | Approval of MS for PHC Substructure & Draft Tube Concrete | 21d | 2025-08-29 | 2025-09-18 | MS-2IV-3203-S | 1018d | 1093d |
| MS-2IV-3401-A |  | Approval of MS for Cable Tunnel | 14d | 2025-09-07 | 2025-09-20 | MS-2IV-3401-S | 1016d | 1091d |
| MS-2IV-3601-S |  | Submission of MS for Drainage Gallery | 15d | 2025-09-17 | 2025-10-01 | IFC-3601 | 991d | 0d |
| MS-2IV-3601-A |  | Approval of MS for Drainage Gallery | 14d | 2025-10-02 | 2025-10-15 | MS-2IV-3601-S | 991d | 1066d |
| MS-2IV-3701-S |  | Submission of MS for Escape Tunnel | 15d | 2025-10-17 | 2025-10-31 | IFC-3701 | 961d | 0d |
| MS-2IV-3701-A |  | Approval of MS for Escape Tunnel | 14d | 2025-11-01 | 2025-11-14 | MS-2IV-3701-S | 961d | 1036d |

| ID | WBS | Activity | Duration | Start | Finish | Predecessors | Total float | Free float |
| --- | --- | --- | --- | --- | --- | --- | --- | --- |
|  | MS-LOT2V | **Method Statements - Access & Tailrace Tunnels (LOT 2-V)** |  | 2025-03-31 | 2026-03-20 |  |  |  |
| MS-2V-4201-S |  | Submission of MS for Tailrace Tunnel (Portal & Excavation) | 21d | 2025-03-31 | 2025-04-20 | IFC-4201 | 1155d | 0d |
| MS-2V-4211-S |  | Submission of MS for Main Access Tunnel (Portal & Excavation) | 21d | 2025-03-31 | 2025-04-20 | IFC-4211 | 1155d | 0d |
| MS-2V-4202-S |  | Submission of MS for Tailrace Tunnel (Lining & Outlet) | 21d | 2025-04-20 | 2025-05-10 | IFC-4202 | 1135d | 0d |
| MS-2V-4201-A |  | Approval of MS for Tailrace Tunnel (Portal & Excavation) | 14d | 2025-04-21 | 2025-05-04 | MS-2V-4201-S | 1155d | 1230d |
| MS-2V-4211-A |  | Approval of MS for Main Access Tunnel (Portal & Excavation) | 14d | 2025-04-21 | 2025-05-04 | MS-2V-4211-S | 1155d | 1230d |
| MS-2V-4202-A |  | Approval of MS for Tailrace Tunnel (Lining & Outlet) | 14d | 2025-05-11 | 2025-05-24 | MS-2V-4202-S | 1135d | 1210d |
| MS-2V-4212-S |  | Submission of MS for Main Access Tunnel (Lining & Pavement) | 21d | 2026-02-14 | 2026-03-06 | IFC-4212 | 835d | 0d |
| MS-2V-4212-A |  | Approval of MS for Main Access Tunnel (Lining & Pavement) | 14d | 2026-03-07 | 2026-03-20 | MS-2V-4212-S | 835d | 910d |
|  | MS-LOT3 | **Method Statements - Hydromechanical Works** |  | 2025-03-02 | 2026-01-07 |  |  |  |
| MS-3-5101-S |  | Submission of MS for Fabrication & Installation of Intake & Undersluice Gates | 21d | 2025-03-02 | 2025-03-22 | IFC-5101 | 1177d | 0d |
| MS-3-5101-A |  | Approval of MS for Fabrication & Installation of Intake & Undersluice Gates | 21d | 2025-03-23 | 2025-04-12 | MS-3-5101-S | 1177d | 1252d |
| MS-3-5102-S |  | Submission of MS for Fabrication & Installation of Waterway Gates | 21d | 2025-07-30 | 2025-08-19 | IFC-5102 | 1027d | 0d |
| MS-3-5102-A |  | Approval of MS for Fabrication & Installation of Waterway Gates | 21d | 2025-08-20 | 2025-09-09 | MS-3-5102-S | 1027d | 1102d |
| MS-3-5201-S |  | Submission of MS for Fabrication & Installation of Penstock | 21d | 2025-11-27 | 2025-12-17 | IFC-5201 | 907d | 0d |
| MS-3-5201-A |  | Approval of MS for Fabrication & Installation of Penstock | 21d | 2025-12-18 | 2026-01-07 | MS-3-5201-S | 907d | 982d |
|  | MS-LOT4 | **Method Statements - Electromechanical Works** |  | 2025-02-15 | 2025-11-08 |  |  |  |
| MS-4-6002-S |  | Submission of MS for Installation of Powerhouse Cranes | 15d | 2025-02-15 | 2025-03-01 | IFC-6002 | 1205d | 0d |
| MS-4-6002-A |  | Approval of MS for Installation of Powerhouse Cranes | 14d | 2025-03-02 | 2025-03-15 | MS-4-6002-S | 1205d | 1280d |
| MS-4-6001-S |  | Submission of MS for Installation of Turbine & Generator | 21d | 2025-05-01 | 2025-05-21 | IFC-6001 | 1117d | 0d |
| MS-4-6001-A |  | Approval of MS for Installation of Turbine & Generator | 21d | 2025-05-22 | 2025-06-11 | MS-4-6001-S | 1117d | 1192d |
| MS-4-6003-S |  | Submission of MS for Installation of Transformers & Switchgear | 21d | 2025-07-30 | 2025-08-19 | IFC-6003 | 1027d | 0d |
| MS-4-6003-A |  | Approval of MS for Installation of Transformers & Switchgear | 21d | 2025-08-20 | 2025-09-09 | MS-4-6003-S | 1027d | 1102d |
| MS-4-6004-S |  | Submission of MS for Installation of Balance of Plant (BOP) | 21d | 2025-09-28 | 2025-10-18 | IFC-6004 | 967d | 0d |
| MS-4-6004-A |  | Approval of MS for Installation of Balance of Plant (BOP) | 21d | 2025-10-19 | 2025-11-08 | MS-4-6004-S | 967d | 1042d |

| ID | WBS | Activity | Type | Duration | Start | Finish | Predecessors | Total float | Free float | Constraint | Resources |
| --- | --- | --- | --- | --- | --- | --- | --- | --- | --- | --- | --- |
|  | MS-LOT5 | **Method Statements - Transmission Line (LOT 5)** |  |  | 2025-03-02 | 2025-09-26 |  |  |  |  |  |
| MS-5-2501-S |  | Submission of MS for TL Foundations & Access |  | 15d | 2025-03-02 | 2025-03-16 | IFC-2501 | 1190d | 0d |  |  |
| MS-5-2501-A |  | Approval of MS for TL Foundations & Access |  | 14d | 2025-03-17 | 2025-03-30 | MS-5-2501-S | 1190d | 1265d |  |  |
| MS-5-2502-S |  | Submission of MS for TL Tower Erection & Stringing |  | 15d | 2025-08-29 | 2025-09-12 | IFC-2502 | 1010d | 0d |  |  |
| MS-5-2502-A |  | Approval of MS for TL Tower Erection & Stringing |  | 14d | 2025-09-13 | 2025-09-26 | MS-5-2502-S | 1010d | 1085d |  |  |
|  | 2 | **Construction of Main Civil Works** |  |  | 2025-01-01 | 2028-03-24 |  |  |  |  |  |
|  | 1 | **Construction of Headworks (LOT 2-I)** |  |  | 2025-01-01 | 2028-03-24 |  |  |  |  |  |
|  | 1 | **First Phase Construction** |  |  | 2025-01-01 | 2028-03-24 |  |  |  |  |  |
|  | 1 | **Cofferdam & River Diversion Works Stage 1** |  |  | 2025-01-01 | 2025-11-01 |  |  |  |  |  |
| KD-04 |  | Commencement of River Diversion Works | milestone | 0d | 2025-11-01 | 2025-11-01 |  | 0d | 1050d | start on 2025-11-01 |  |
| L-1000 |  | River Diversion Works | level of effort | 0d | 2025-11-01 | 2025-11-01 | KD-04 SS | 975d | 0d |  | Concrete |
|  | 1 | **Preparatory & Site Works** |  |  | 2025-01-01 | 2025-06-19 |  |  |  |  |  |
| CD-1010 |  | Mobilization of Specialized Plant & Personnel for Cofferdam Works |  | 20d | 2025-01-01 | 2025-01-20 |  | 997d | 0d |  |  |
| CD-1020 |  | Procurement and Delivery of Boulders and Clay |  | 120d | 2025-01-21 | 2025-05-20 | CD-1010 | 1139d | 1214d |  |  |
| CD-1030 |  | Procurement and Delivery of Geomembrane and Filter Fabric |  | 150d | 2025-01-21 | 2025-06-19 | CD-1010 | 997d | 0d |  |  |
|  | 2 | **River Control & Foundation Works** |  |  | 2025-01-21 | 2025-04-05 |  |  |  |  |  |
| CD-2010 |  | Survey, Setting Out, and Site Clearing for Cofferdam & Diversion |  | 15d | 2025-01-21 | 2025-02-04 | CD-1010 | 1184d | 0d |  |  |
| CD-2020 |  | Construct Temporary Diversion Channel and Dewatering System |  | 45d | 2025-02-05 | 2025-03-21 | CD-2010 | 1184d | 0d |  |  |
| CD-2030 |  | Foundation Preparation and Cleanup |  | 15d | 2025-03-22 | 2025-04-05 | CD-2020 | 1184d | 1259d |  |  |
|  | 3 | **Cofferdam Embankment Construction** |  |  | 2025-01-01 | 2025-05-30 |  |  |  |  |  |
| CD-3010 |  | Earthwork: Filling of Muck for Cofferdam Body (Layer by Layer Compaction) |  | 150d | 2025-01-01 | 2025-05-30 |  | 979d | 0d |  |  |
| CD-3020 |  | Core Construction: Laying of Impervious Clay Layer |  | 130d | 2025-01-21 | 2025-05-30 | CD-3010 SS+20d | 1129d | 1204d |  |  |
|  | 4 | **Protection & Surface Works** |  |  | 2025-06-20 | 2025-09-12 |  |  |  |  |  |
| CD-4010 |  | Protection Layers: Install Graded Filter, Plastic Liner & Geomembrane |  | 40d | 2025-06-20 | 2025-07-29 | CD-3010, CD-1030 | 997d | 0d |  |  |
| CD-4020 |  | Surface Works: Boulder Lining and Stone Pitching |  | 45d | 2025-07-30 | 2025-09-12 | CD-4010 | 997d | 0d |  |  |

| ID | WBS | Activity | Type | Duration | Start | Finish | Predecessors | Total float | Free float | Constraint | Resources | Cost |
| --- | --- | --- | --- | --- | --- | --- | --- | --- | --- | --- | --- | --- |
|  | 5 | **Finalization & Inspection** |  |  | 2025-05-31 | 2025-10-27 |  |  |  |  |  |  |
| CD-5010 |  | Installation of Instrumentation (Piezometers) |  | 150d | 2025-05-31 | 2025-10-27 | CD-3010 | 979d | 1054d |  |  |  |
| CD-5020 |  | Final Grading, Site Cleanup, and Inspection |  | 17d | 2025-09-13 | 2025-09-29 | CD-4020 | 997d | 0d |  |  |  |
| CD-5030 |  | Demobilization of Cofferdam-specific resources |  | 10d | 2025-09-30 | 2025-10-09 | CD-5020 | 997d | 1072d |  |  |  |
|  | 2 | **Construction of U/S Raft** |  |  |  |  |  |  |  |  |  |  |
|  | 3 | **Construction of U/S Left Bank Flood Wall** |  |  |  |  |  |  |  |  |  |  |
|  | 4 | **Undersluice and Barrage** |  |  | 2025-12-31 | 2027-11-12 |  |  |  |  |  |  |
| A-1030 |  | Foundation Prep & Excavation |  | 228d | 2025-12-31 | 2026-08-15 | KD-05 SS | 233d | 0d |  |  |  |
| KD-05 |  | Commencement of Construction of Barrage Structures | milestone | 0d | 2025-12-31 | 2025-12-31 |  | 0d |  | start on 2025-12-31 |  |  |
| L-1010 |  | Undersluics and Barrage | level of effort | 682d | 2025-12-31 | 2027-11-12 | KD-05 SS | 233d | 0d |  | Concrete [67137.1 m3] | 1,007,056,350 |
| A-1040 |  | Concrete Works for Undersluice & Barrage |  | 227d | 2026-08-16 | 2027-03-30 | A-1030 | 233d | 0d |  |  |  |
| A-1050 |  | Spillway & Right Bank Flood Wall Construction |  | 227d | 2027-03-31 | 2027-11-12 | A-1040, L-1010 FF | 233d | 308d |  |  |  |
|  | 5 | **Intake & Gravel Trap** |  |  | 2025-12-31 | 2027-03-02 |  |  |  |  |  |  |
| A-1060 |  | Excavation for Intake & Gravel Trap |  | 143d | 2025-12-31 | 2026-05-22 | KD-06 SS | 488d | 0d |  |  |  |
| KD-06 |  | Commencement of Construction of Intake Structures | milestone | 0d | 2025-12-31 | 2025-12-31 |  | 0d |  | start on 2025-12-31 |  |  |
| A-1070 |  | Intake Structure Concrete Works |  | 142d | 2026-05-23 | 2026-10-11 | A-1060 | 488d | 0d |  |  |  |
| A-1080 |  | Gravel Trap & Spillway Construction |  | 142d | 2026-10-12 | 2027-03-02 | A-1070 | 488d | 563d |  |  |  |
|  | 6 | **Approach Culvert & Settling Basin** |  |  | 2025-12-31 | 2028-03-24 |  |  |  |  |  |  |
| A-1140 |  | Approach Culvert Excavation |  | 272d | 2025-12-31 | 2026-09-28 | KD-09 SS | 100d | 0d |  |  |  |
| KD-09 |  | Commencement of Approach Culvert and Settling Basin | milestone | 0d | 2025-12-31 | 2025-12-31 |  | 0d |  | start on 2025-12-31 |  |  |
| A-1150 |  | Settling Basin Construction |  | 271d | 2026-09-29 | 2027-06-26 | A-1140 | 100d | 0d |  |  |  |
| A-1160 |  | Energy Dissipator & Spillway Construction |  | 272d | 2027-06-27 | 2028-03-24 | A-1150 | 100d | 175d |  |  |  |
|  | 7 | **Headpond & Bypass Pipe** |  |  | 2025-12-31 | 2027-11-30 |  |  |  |  |  |  |
| A-1170 |  | Headpond Excavation & Prep |  | 280d | 2025-12-31 | 2026-10-06 | KD-10 SS | 215d | 0d |  |  |  |
| KD-10 |  | Commencement of Headpond and Bypass Pipe | milestone | 0d | 2025-12-31 | 2025-12-31 |  | 0d |  | start on 2025-12-31 |  |  |
| A-1180 |  | Headpond Concrete & Lining |  | 210d | 2026-10-07 | 2027-05-04 | A-1170 | 215d | 0d |  |  |  |
| A-1190 |  | Bypass Pipe Installation & Connection |  | 210d | 2027-05-05 | 2027-11-30 | A-1180 | 215d | 290d |  |  |  |

| ID | WBS | Activity | Type | Duration | Start | Finish | Predecessors | Total float | Free float | Constraint |
| --- | --- | --- | --- | --- | --- | --- | --- | --- | --- | --- |
|  | 8 | **DS Left Bank Flood Wall** |  |  | 2026-03-01 | 2027-11-15 |  |  |  |  |
| A-1120 |  | Excavate Wall Foundation Post-Sill |  | 313d | 2026-03-01 | 2027-01-07 | KD-08 SS | 230d | 0d |  |
| KD-08 |  | Commencement of Construction of Downstream Flood Walls | milestone | 0d | 2026-03-01 | 2026-03-01 |  | 0d |  | start on 2026-03-01 |
| A-1130 |  | Construct Flood Wall Post-Sill |  | 312d | 2027-01-08 | 2027-11-15 | A-1120 | 230d | 305d |  |
|  | 9 | **Construction of DS Cutoff** |  |  |  |  |  |  |  |  |
|  | 2 | **Second Phase Construciton** |  |  | 2025-12-31 | 2027-09-16 |  |  |  |  |
|  | 1 | **Cofferdam & River Diversion Works Stage 2** |  |  |  |  |  |  |  |  |
|  | 3 | **Construction of U/S Right Bank Flood Wall** |  |  |  |  |  |  |  |  |
|  | 4 | **Weir** |  |  |  |  |  |  |  |  |
|  | 2 | **Construction of U/S Raft** |  |  |  |  |  |  |  |  |
|  | 5 | **Stilling Basin Blocks** |  |  |  |  |  |  |  |  |
|  | 6 | **DS Right Bank Flood Wall** |  |  | 2025-12-31 | 2027-09-16 |  |  |  |  |
| A-1090 |  | Excavate for US Left Bank Wall |  | 209d | 2025-12-31 | 2026-07-27 | KD-07 SS | 290d | 0d |  |
| KD-07 |  | Commencement of Construction of Upstream Flood Walls | milestone | 0d | 2025-12-31 | 2025-12-31 |  | 0d |  | start on 2025-12-31 |
| A-1100 |  | Construct US Left Bank Wall |  | 208d | 2026-07-28 | 2027-02-20 | A-1090 | 290d | 0d |  |
| A-1110 |  | Construct DS Left Bank Wall to Sill |  | 208d | 2027-02-21 | 2027-09-16 | A-1100 | 290d | 365d |  |
|  | 8 | **Construction of DS Cutoff** |  |  |  |  |  |  |  |  |
|  | 2 | **Construction of Surge & Penstock (LOT 2-III)** |  |  | 2025-11-01 | 2028-01-09 |  |  |  |  |
|  | 1 | **Surge Shaft & Connecting Tunnel** |  |  | 2025-11-01 | 2027-02-05 |  |  |  |  |
| A-2000 |  | Site Clearance |  | 7d | 2025-11-01 | 2025-11-07 | KD-11 SS | 513d | 0d |  |
| KD-11 |  | Commencement of Construction of Surga Shaft and Surge Tunnel | milestone | 0d | 2025-11-01 | 2025-11-01 |  | 0d |  | start on 2025-11-01 |
| A-2010 |  | Slope Protection and Platform (upto EL. 1424) |  | 12d | 2025-11-08 | 2025-11-19 | A-2000 | 513d | 0d |  |
| A-2020 |  | Slope Protection and Platform (upto EL. 1416) |  | 18d | 2025-11-20 | 2025-12-07 | A-2010 | 513d | 0d |  |
| A-2030 |  | Surge Shaft Collar Construction |  | 7d | 2025-12-08 | 2025-12-14 | A-2020 | 513d | 0d |  |
| A-2040 |  | Installation of Shaft Excavation Facilities |  | 7d | 2025-12-08 | 2025-12-14 | A-2030 SS | 928d | 0d |  |
| A-2050 |  | Drilling and Blasting Vertical Excavation (Total Runs = 59) |  | 236d | 2025-12-15 | 2026-08-07 | A-2030 | 513d | 0d |  |

| ID | WBS | Activity | Type | Duration | Start | Finish | Predecessors | Total float | Free float | Constraint | Calendar |
| --- | --- | --- | --- | --- | --- | --- | --- | --- | --- | --- | --- |
|  | 1 | **Drilling and Blasting Vertical Excavation Single Run (Run Length = 2.5m)** |  |  | 2025-12-14 | 2025-12-17 |  |  |  |  |  |
| A-2640 |  | Survey and Drill Marking |  | 0.04d | 2025-12-14 | 2025-12-14 | A-2040 | 928.21d | 0d |  | 24 hr 7 days |
| A-2650 |  | Drilling of Holes |  | 0.42d | 2025-12-14 | 2025-12-15 | A-2640 | 928.21d | 0d |  | 24 hr 7 days |
| A-2660 |  | Charge and Tie-in (Load Explosives) |  | 0.17d | 2025-12-15 | 2025-12-15 | A-2650 | 928.21d | 0d |  | 24 hr 7 days |
| A-2670 |  | Shaft Clearance and Blasting |  | 0.04d | 2025-12-15 | 2025-12-15 | A-2660 | 928.21d | 0d |  | 24 hr 7 days |
| A-2680 |  | Post-Blast Ventilation (Re-entry Period) |  | 0.04d | 2025-12-15 | 2025-12-15 | A-2670 | 928.21d | 0d |  | 24 hr 7 days |
| A-2690 |  | Mucking (Spoil Removal) |  | 1d | 2025-12-15 | 2025-12-16 | A-2680 | 928.21d | 0d |  | 24 hr 7 days |
| A-2700 |  | Scaling |  | 0.12d | 2025-12-16 | 2025-12-16 | A-2690 | 928.21d | 0d |  | 24 hr 7 days |
| A-2710 |  | Rock Bolt and Shotcrete |  | 1d | 2025-12-16 | 2025-12-17 | A-2700 | 928.21d | 1003.17d |  | 24 hr 7 days |
|  | 2 | **Concrete Lining of Surge Shaft** |  |  | 2026-08-08 | 2027-01-18 |  |  |  |  |  |
| A-2800 |  | Bottom Slab Concreting [EL. 1268.525 to EL. 1270.00] |  | 14d | 2026-08-08 | 2026-08-21 | A-2050 | 513d | 0d |  |  |
| A-2810 |  | Concrete Lining 1.4 m thick [EL. 1270.00 to EL. 1303.75] |  | 35d | 2026-08-22 | 2026-09-25 | A-2800 | 513d | 0d |  |  |
| A-2820 |  | Concrete Lining 1.1 m thick [EL.1303.75 to EL. 1337.50] |  | 35d | 2026-09-26 | 2026-10-30 | A-2810 | 513d | 0d |  |  |
| A-2830 |  | Concrete Lining 0.7 m thick [EL. 1337.50 to EL.1371.25] |  | 35d | 2026-10-31 | 2026-12-04 | A-2820 | 513d | 0d |  |  |
| A-2840 |  | Concrete Lining 0.4 m thick [EL. 1371.25 to EL. 1416] |  | 45d | 2026-12-05 | 2027-01-18 | A-2830 | 513d | 0d |  |  |
|  | 1 | **Concrete Lining Single Lift 5m** |  |  | 2026-08-22 | 2026-08-26 |  |  |  |  |  |
| A-2920 |  | Rebar Cage Placement and Formwork Placement |  | 1d | 2026-08-22 | 2026-08-22 | A-2800 | 676d | 0d |  |  |
| A-2930 |  | Concrete Puring |  | 1d | 2026-08-23 | 2026-08-23 | A-2920 | 676d | 0d |  |  |
| A-2940 |  | Formwork Holding Period |  | 2d | 2026-08-24 | 2026-08-25 | A-2930 | 676d | 0d |  |  |
| A-2950 |  | Formwork Removal |  | 1d | 2026-08-26 | 2026-08-26 | A-2940 | 676d | 751d |  |  |
|  | 3 | **Construction of Roof Truss** |  |  | 2026-10-31 | 2027-02-05 |  |  |  |  |  |
| A-3000 |  | Material Arrangement for Roof Truss |  | 30d | 2026-10-31 | 2026-11-29 | A-2830 SS | 581d | 656d |  |  |
| A-3010 |  | Construction of Roof Truss |  | 18d | 2027-01-19 | 2027-02-05 | A-2840 | 513d | 588d |  |  |
|  | 2 | **Vertical Pressure Shaft (VPS)** |  |  | 2025-11-01 | 2028-01-09 |  |  |  |  |  |
| A-2300 |  | Site Clearance and Preparation |  | 30d | 2025-11-01 | 2025-11-30 | KD-12 SS | 175d | 0d |  |  |
| KD-12 |  | Commencement of Construction of Vertical Pressure Shaft | milestone | 0d | 2025-11-01 | 2025-11-01 |  | 0d |  | start on 2025-11-01 |  |
| A-2310 |  | Installation of Shaft Boring Machine |  | 60d | 2025-12-01 | 2026-01-29 | A-2300 | 175d | 0d |  |  |
| A-2320 |  | Excavation of Pressure Shaft |  | 710d | 2026-01-30 | 2028-01-09 | A-2310 | 175d | 250d |  |  |

| ID | WBS | Activity | Type | Duration | Start | Finish | Predecessors | Total float | Free float | Constraint |
| --- | --- | --- | --- | --- | --- | --- | --- | --- | --- | --- |
|  | 3 | **Penstock Tunnel (HPS)** |  |  | 2026-01-25 | 2026-04-17 |  |  |  |  |
| A-2400 |  | Horizontal Shaft Tunnel Excavation |  | 30d | 2026-01-25 | 2026-02-23 | KD-13 SS | 807d | 0d |  |
| KD-13 |  | Commencement of Construction of Penstock Tunnel | milestone | 0d | 2026-01-25 | 2026-01-25 |  | 0d |  | start on 2026-01-25 |
| A-2410 |  | Excavation of Branching Tunnel |  | 30d | 2026-02-24 | 2026-03-25 | A-2400 | 807d | 0d |  |
| A-2420 |  | Excavation of Penstock Tunnels |  | 45d | 2026-03-04 | 2026-04-17 | A-2410 SS+8d | 807d | 882d |  |
|  | 3 | **Construction of Powerhouse Caverns (LOT 2-IV)** |  |  | 2025-08-13 | 2027-07-31 |  |  |  |  |
|  | 3.1 | **Ventilation Tunnel to PHC & TC** |  |  | 2025-08-13 | 2025-11-30 |  |  |  |  |
| A-1260 |  | Ventillation Tunnel Excavation (N1 to V1) |  | 45d | 2025-08-13 | 2025-09-26 | KD-14 SS | 945d | 0d |  |
| A-1610 |  | Ventillation Tunnel Excavation (Portal to V2) |  | 90d | 2025-08-13 | 2025-11-10 | A-1260 SS | 965d | 1040d |  |
| KD-14 |  | Commencement of Construction of Ventilation to PHC and TC | milestone | 0d | 2025-08-13 | 2025-08-13 |  | 0d |  | start on 2025-08-13 |
| A-1270 |  | Ventillation Tunnel Excavation (V1 to V2) |  | 45d | 2025-09-27 | 2025-11-10 | A-1260 | 945d | 0d |  |
| A-1590 |  | Ventillation Tunnel Excavation (V1 to TC) |  | 20d | 2025-09-27 | 2025-10-16 | A-1260 | 990d | 1065d |  |
| A-1600 |  | Ventillation Tunnel Excavation (V2 to PC) |  | 20d | 2025-11-11 | 2025-11-30 | A-1270 | 945d | 1020d |  |
|  | 3.2 | **Powerhouse Cavern (PHC)** |  |  | 2025-11-16 | 2027-07-31 |  |  |  |  |
| A-1280 |  | PHC Excavation & Primary Support (Top Heading & Benching) |  | 312d | 2025-11-16 | 2026-09-23 | KD-15 SS | 337d | 0d |  |
| KD-15 |  | Commencement of Construction of Powerhouse Cavern | milestone | 0d | 2025-11-16 | 2025-11-16 |  | 0d |  | start on 2025-11-16 |
| A-1290 |  | PHC Structural Concrete Works (Foundations, Walls, Crane Beams) |  | 311d | 2026-09-24 | 2027-07-31 | A-1280 | 337d | 412d |  |
|  | 3.3 | **Transformer Cavern (TC)** |  |  | 2026-01-05 | 2027-07-27 |  |  |  |  |
| A-1300 |  | TC Excavation & Primary Support (Top Heading & Benching) |  | 285d | 2026-01-05 | 2026-10-16 | KD-16 SS | 341d | 0d |  |
| KD-16 |  | Commencement of Construction of Transformer Cavern | milestone | 0d | 2026-01-05 | 2026-01-05 |  | 0d |  | start on 2026-01-05 |
| A-1310 |  | TC Structural Concrete Works (Foundations & Slabs) |  | 284d | 2026-10-17 | 2027-07-27 | A-1300 | 341d | 416d |  |
|  | 3.4 | **Cable Tunnel** |  |  | 2026-11-04 | 2026-12-13 |  |  |  |  |
| A-1320 |  | Cable Tunnel Excavation & Lining |  | 40d | 2026-11-04 | 2026-12-13 | KD-17 SS | 567d | 642d |  |
| KD-17 |  | Commencement of Construction of Cable Tunnel | milestone | 0d | 2026-11-04 | 2026-11-04 |  | 0d |  | start on 2026-11-04 |

| ID | WBS | Activity | Type | Duration | Start | Finish | Predecessors | Total float | Free float | Constraint |
| --- | --- | --- | --- | --- | --- | --- | --- | --- | --- | --- |
|  | 3.5 | **Access Tunnel to Penstock Shaft** |  |  | 2025-09-12 | 2026-09-29 |  |  |  |  |
| A-1330 |  | Penstock Access Tunnel Excavation |  | 383d | 2025-09-12 | 2026-09-29 | KD-18 SS | 642d | 717d |  |
| KD-18 |  | Commencement of Construction of Access Tunnel to Penstock Shaft | milestone | 0d | 2025-09-12 | 2025-09-12 |  | 0d |  | start on 2025-09-12 |
|  | 3.6 | **Drainage Galley** |  |  | 2026-11-04 | 2027-07-21 |  |  |  |  |
| A-1350 |  | Drainage Galley Excavation and Lining |  | 260d | 2026-11-04 | 2027-07-21 | KD-19 SS | 347d | 422d |  |
| KD-19 |  | Commencement of Construction of Drainage Gallery | milestone | 0d | 2026-11-04 | 2026-11-04 |  | 0d |  | start on 2026-11-04 |
|  | 3.7 | **Escape Tunnel** |  |  | 2027-03-24 | 2027-07-31 |  |  |  |  |
| A-1370 |  | Escape Tunnel Excavation & Lining |  | 130d | 2027-03-24 | 2027-07-31 | KD-20 SS | 337d | 412d |  |
| KD-20 |  | Commencement of Construction of Escape Tunnel | milestone | 0d | 2027-03-24 | 2027-03-24 |  | 0d |  | start on 2027-03-24 |
|  | 4 | **Construction of Tunnels (LOT 2-V)** |  |  | 2025-02-14 | 2027-10-21 |  |  |  |  |
|  | 4.1 | **Main Access Tunnel** |  |  | 2025-02-14 | 2027-10-21 |  |  |  |  |
| A-2510 |  | Main Access Tunnel Portal Construction |  | 60d | 2025-02-14 | 2025-04-14 | KD-21 SS | 255d | 0d |  |
| KD-21 |  | Commencement of Construction of Main Access Tunnel | milestone | 0d | 2025-02-14 | 2025-02-14 |  | 0d |  | start on 2025-02-14 |
| A-2520 |  | Excavation of MAT (Portal - N1) |  | 430d | 2025-04-15 | 2026-06-18 | A-2510 | 255d | 0d |  |
| A-2530 |  | Excavation of MAT (N1 - N2) |  | 60d | 2026-06-19 | 2026-08-17 | A-2520 | 255d | 0d |  |
| A-2540 |  | Excavation of MAT (N2 - HPS) |  | 430d | 2026-08-18 | 2027-10-21 | A-2530 | 255d | 330d |  |
|  | 4.2 | **Tailrace Channel (TRC)** |  |  | 2025-02-14 | 2027-02-07 |  |  |  |  |
| A-2610 |  | TRC Tunnel Portal Construction |  | 45d | 2025-02-14 | 2025-03-30 | KD-22 SS | 511d | 0d |  |
| KD-22 |  | Commencement of Construction of TRC | milestone | 0d | 2025-02-14 | 2025-02-14 |  | 0d |  | start on 2025-02-14 |
| A-2620 |  | TRC Tunnel Excavation |  | 589d | 2025-03-31 | 2026-11-09 | A-2610 | 511d | 0d |  |
| A-2630 |  | TRC Branch Tunnel Excavation |  | 90d | 2026-11-10 | 2027-02-07 | A-2620 | 511d | 586d |  |
|  | 3 | **Construction of Hydromechanical Works (LOT-3)** |  |  | 2026-07-21 | 2028-03-24 |  |  |  |  |
| KD-23 |  | Commencement of Hydromechanical Works (Gates) | milestone | 0d | 2026-07-21 | 2026-07-21 |  | 0d |  | start on 2026-07-21 |
|  | 1 | **Engineering, Procurement & Delivery** |  |  | 2026-07-21 | 2027-08-24 |  |  |  |  |
| HM-1010 |  | Detailed Design, Shop Drawing Approval & Procurement |  | 100d | 2026-07-21 | 2026-10-28 | KD-23 SS | 100d | 0d |  |
| HM-1020 |  | Manufacturing, Factory Acceptance Testing (FAT), and Phased Delivery |  | 300d | 2026-10-29 | 2027-08-24 | HM-1010 | 100d | 0d |  |

| ID | WBS | Activity | Type | Duration | Start | Finish | Predecessors | Total float | Free float | Constraint |
| --- | --- | --- | --- | --- | --- | --- | --- | --- | --- | --- |
|  | 2 | **Penstock Pipe Installation** |  |  | 2026-10-29 | 2027-04-06 |  |  |  |  |
| HM-2010 |  | Penstock Pipe Installation, Welding, NDT, and Hydro-testing |  | 160d | 2026-10-29 | 2027-04-06 | HM-1010 | 453d | 528d |  |
|  | 3 | **Gates & Hoists Installation** |  |  | 2026-10-29 | 2028-01-21 |  |  |  |  |
| HM-3010 |  | Undersluice Gates: Installation of Embedded Parts (Guides, Sills) |  | 150d | 2026-10-29 | 2027-03-27 | HM-1010 | 280d | 0d |  |
| HM-3030 |  | Intake Gates: Installation of Embedded Parts |  | 150d | 2026-10-29 | 2027-03-27 | HM-1010 | 280d | 0d |  |
| HM-3020 |  | Undersluice Gates: Assembly & Installation of Gate Leaves & Hoists |  | 120d | 2027-03-28 | 2027-07-25 | HM-3010 | 280d | 180d |  |
| HM-3040 |  | Intake Gates: Assembly & Installation of Emergency and Maintenance Gates |  | 120d | 2027-03-28 | 2027-07-25 | HM-3030 | 280d | 180d |  |
| HM-3050 |  | Powerhouse Draft Tube Gates: Assembly & Installation |  | 150d | 2027-08-25 | 2028-01-21 | HM-1020 | 100d | 0d |  |
|  | 4 | **Final Works and Commissioning** |  |  | 2028-01-22 | 2028-03-24 |  |  |  |  |
| HM-4010 |  | Integrated Dry & Wet Commissioning of All Gates and Systems |  | 63d | 2028-01-22 | 2028-03-24 | HM-3020, HM-3040, HM-3050 | 100d | 175d |  |
|  | 4 | **Construction of Electromechanical Works (LOT-4)** |  |  | 2026-12-04 | 2028-04-26 |  |  |  |  |
| KD-25 |  | Commencement of Electromechanical Works | milestone | 0d | 2026-12-04 | 2026-12-04 |  | 67d | 0d | start on or after 2026-12-04 |
|  | 1 | **Project Management & Procurement** |  |  | 2026-12-04 | 2028-03-02 |  |  |  |  |
| EM-6101 |  | E/M Detailed Design, Shop Drawing Submission & Approval |  | 90d | 2026-12-04 | 2027-03-03 | KD-25 SS | 122d | 0d |  |
| EM-6102 |  | Manufacturing, FAT, and Shipment of E/M Components to Site |  | 365d | 2027-03-04 | 2028-03-02 | EM-6101 | 122d | 0d |  |
|  | 2 | **Powerhouse Mechanical Systems** |  |  | 2026-12-04 | 2028-02-26 |  |  |  |  |
|  | 1 | **Main Generating Units - Mechanical** |  |  | 2027-02-02 | 2028-02-26 |  |  |  |  |
| EM-6211 |  | Unit 1: Install Draft Tube Liner, Stay Ring, and Spiral Casing |  | 90d | 2027-02-02 | 2027-05-02 | EM-6221 | 67d | 0d |  |
| EM-6213 |  | Unit 2: Install Draft Tube Liner, Stay Ring, and Spiral Casing |  | 90d | 2027-04-03 | 2027-07-01 | EM-6211 SS+60d | 67d | 0d |  |
| EM-6212 |  | Unit 1: Assemble Turbine Runner, Shaft, and Head Cover |  | 60d | 2027-05-03 | 2027-07-01 | EM-6211 | 187d | 0d |  |
| EM-6215 |  | Unit 3: Install Draft Tube Liner, Stay Ring, and Spiral Casing |  | 90d | 2027-06-02 | 2027-08-30 | EM-6213 SS+60d | 67d | 0d |  |
| EM-6214 |  | Unit 2: Assemble Turbine Runner, Shaft, and Head Cover |  | 60d | 2027-07-02 | 2027-08-30 | EM-6213 | 307d | 0d |  |
| EM-6217 |  | Unit 4: Install Draft Tube Liner, Stay Ring, and Spiral Casing |  | 90d | 2027-08-01 | 2027-10-29 | EM-6215 SS+60d | 67d | 0d |  |
| EM-6216 |  | Unit 3: Assemble Turbine Runner, Shaft, and Head Cover |  | 60d | 2027-08-31 | 2027-10-29 | EM-6215 | 247d | 0d |  |
| EM-6219 |  | Unit 5: Install Draft Tube Liner, Stay Ring, and Spiral Casing |  | 90d | 2027-09-30 | 2027-12-28 | EM-6217 SS+60d | 67d | 0d |  |
| EM-6218 |  | Unit 4: Assemble Turbine Runner, Shaft, and Head Cover |  | 60d | 2027-10-30 | 2027-12-28 | EM-6217 | 187d | 0d |  |
| EM-6220 |  | Unit 5: Assemble Turbine Runner, Shaft, and Head Cover |  | 60d | 2027-12-29 | 2028-02-26 | EM-6219 | 67d | 0d |  |

| ID | WBS | Activity | Type | Duration | Start | Finish | Predecessors | Total float | Free float | Constraint |
| --- | --- | --- | --- | --- | --- | --- | --- | --- | --- | --- |
|  | 2 | **Balance of Plant (BoP) - Mechanical** |  |  | 2026-12-04 | 2027-05-02 |  |  |  |  |
| EM-6221 |  | Installation of Powerhouse EOT Cranes (5 units), Rails, and Embedded Parts |  | 60d | 2026-12-04 | 2027-02-01 | KD-25 SS | 67d | 0d |  |
| EM-6222 |  | Installation of Cooling Water, Drainage, and Dewatering Systems |  | 90d | 2027-02-02 | 2027-05-02 | EM-6221 | 427d | 502d |  |
| EM-6223 |  | Installation of HVAC, Compressed Air, and Firefighting Systems |  | 90d | 2027-02-02 | 2027-05-02 | EM-6221 | 427d | 502d |  |
|  | 3 | **Powerhouse Electrical & Control Systems** |  |  | 2027-07-02 | 2028-02-26 |  |  |  |  |
|  | 1 | **Main Generating Units - Electrical** |  |  | 2027-07-02 | 2028-02-26 |  |  |  |  |
| EM-6311 |  | Unit 1: Assemble Generator Stator, Rotor, and Bearings |  | 60d | 2027-07-02 | 2027-08-30 | EM-6212 | 187d | 0d |  |
| EM-6312 |  | Unit 2: Assemble Generator Stator, Rotor, and Bearings |  | 60d | 2027-07-02 | 2027-08-30 | EM-6214 SS | 307d | 382d |  |
| EM-6313 |  | Unit 3: Assemble Generator Stator, Rotor, and Bearings |  | 60d | 2027-08-31 | 2027-10-29 | EM-6216 SS | 247d | 322d |  |
| EM-6314 |  | Unit 4: Assemble Generator Stator, Rotor, and Bearings |  | 60d | 2027-10-30 | 2027-12-28 | EM-6218 SS | 187d | 262d |  |
| EM-6315 |  | Unit 5: Assemble Generator Stator, Rotor, and Bearings |  | 60d | 2027-12-29 | 2028-02-26 | EM-6220 SS | 67d | 0d |  |
|  | 2 | **Balance of Plant (BoP) - Electrical & C&I** |  |  | 2027-08-01 | 2027-12-28 |  |  |  |  |
| EM-6321 |  | Installation of Main Transformers, MV/LV Switchgear, and DC/UPS Systems |  | 150d | 2027-08-01 | 2027-12-28 | EM-6102 SS+150d | 187d | 0d |  |
| EM-6322 |  | Installation of DCS, SCADA, Protection Panels, and Control Room Equipment |  | 90d | 2027-09-20 | 2027-12-18 | EM-6321 SS+50d | 197d | 272d |  |
|  | 4 | **Powerhouse Final Assembly & Finishing** |  |  | 2027-07-02 | 2028-04-26 |  |  |  |  |
| EM-6401 |  | Cabling, Grounding, and Termination for All Systems |  | 120d | 2027-07-02 | 2027-10-29 | EM-6311 SS | 187d | 120d |  |
| EM-6402 |  | Final Mechanical & Electrical Hook-ups and Pre-commissioning Checks |  | 60d | 2028-02-27 | 2028-04-26 | EM-6315, EM-6401 | 67d | 142d |  |
|  | 5 | **Transmission Line Works (LOT-5)** |  |  | 2025-11-01 | 2026-09-23 |  |  |  |  |
| KD-26 |  | Commencement of Transmission Line Works | milestone | 0d | 2025-11-01 | 2025-11-01 |  | 648d | 0d | start on or after 2025-11-01 |
|  | 1 | **Pre-Construction and Design** |  |  | 2025-11-01 | 2026-02-28 |  |  |  |  |
| TL-7101 |  | Detailed Route Survey, Tower Spotting & Soil Investigation |  | 30d | 2025-11-01 | 2025-11-30 | KD-26 SS | 648d | 0d |  |
| TL-7102 |  | Preparation & Approval of Design and Shop Drawings |  | 30d | 2025-12-01 | 2025-12-30 | TL-7101 | 663d | 0d |  |
| TL-7103 |  | Procurement & Factory Acceptance Testing of Towers, Conductors, and Hardware |  | 60d | 2025-12-31 | 2026-02-28 | TL-7102 | 663d | 15d |  |
|  | 2 | **Foundation Construction** |  |  | 2025-12-01 | 2026-03-15 |  |  |  |  |
| TL-7201 |  | Right-of-Way (ROW) Clearing and Access Road Preparation |  | 30d | 2025-12-01 | 2025-12-30 | TL-7101 | 648d | 0d |  |
| TL-7202 |  | Excavation and Preparation for Tower Foundations |  | 45d | 2025-12-31 | 2026-02-13 | TL-7201 | 648d | 0d |  |
| TL-7203 |  | Formwork, Reinforcement, and Concrete Pouring for Foundations |  | 45d | 2026-01-30 | 2026-03-15 | TL-7202 SS+30d | 648d | 0d |  |

| ID | WBS | Activity | Type | Duration | Start | Finish | Predecessors | Total float | Free float | Constraint |
| --- | --- | --- | --- | --- | --- | --- | --- | --- | --- | --- |
|  | 3 | **Tower Erection** |  |  | 2026-03-16 | 2026-05-29 |  |  |  |  |
| TL-7301 |  | Tower Material Staging and Panel Assembly at Site |  | 30d | 2026-03-16 | 2026-04-14 | TL-7203, TL-7103 | 648d | 0d |  |
| TL-7302 |  | Tower Erection, Alignment, and Bolt Tightening |  | 45d | 2026-04-15 | 2026-05-29 | TL-7301 | 648d | 0d |  |
|  | 4 | **Conductor and OPGW Stringing** |  |  | 2026-05-30 | 2026-08-12 |  |  |  |  |
| TL-7401 |  | Installation of Insulator Strings and Conductor Stringing Equipment |  | 30d | 2026-05-30 | 2026-06-28 | TL-7302 | 648d | 0d |  |
| TL-7402 |  | Conductor & OPGW Stringing, Sagging, and Clamping |  | 45d | 2026-06-29 | 2026-08-12 | TL-7401 | 648d | 0d |  |
|  | 5 | **Testing and Commissioning** |  |  | 2026-08-13 | 2026-09-23 |  |  |  |  |
| TL-7501 |  | Installation of Fittings, Vibration Dampers, and Warning Spheres |  | 20d | 2026-08-13 | 2026-09-01 | TL-7402 | 648d | 0d |  |
| TL-7502 |  | Pre-Commissioning Tests (Continuity, Insulation Resistance) |  | 10d | 2026-09-02 | 2026-09-11 | TL-7501 | 648d | 0d |  |
| TL-7503 |  | Final Walk-through, Punch List Rectification, and Handover |  | 12d | 2026-09-12 | 2026-09-23 | TL-7502 | 648d | 723d |  |
|  | 6 | **Testing & Commissioning** |  |  | 2028-05-02 | 2028-06-30 |  |  |  |  |
| KD-27 |  | Commencement of Testing and Commissioning | milestone | 0d | 2028-05-02 | 2028-05-02 |  | 2d | 0d | start on or after 2028-05-02 |
|  | 1 | **Pre-Commissioning and Dry Testing** |  |  | 2028-05-02 | 2028-05-06 |  |  |  |  |
| TC-8101 |  | Dry Loop Checks & Verification (Instrumentation, Control, Protection) |  | 5d | 2028-05-02 | 2028-05-06 | KD-27 SS | 2d | 0d |  |
| TC-8102 |  | Mechanical Cold Commissioning (Alignment, Rotational Checks, Lubrication) |  | 5d | 2028-05-02 | 2028-05-06 | KD-27 SS | 2d | 0d |  |
|  | 2 | **Wet Commissioning and System Tests** |  |  | 2028-05-07 | 2028-05-16 |  |  |  |  |
| TC-8201 |  | First Filling and Pressurization of Penstock and Waterways |  | 5d | 2028-05-07 | 2028-05-11 | TC-8101, TC-8102 | 2d | 0d |  |
| TC-8202 |  | Leakage and Pressure Tests of Waterways and Valves |  | 5d | 2028-05-12 | 2028-05-16 | TC-8201 | 2d | 0d |  |
|  | 3 | **Unit Commissioning** |  |  | 2028-05-17 | 2028-06-13 |  |  |  |  |
|  | 1 | **Unit 1 Commissioning** |  |  | 2028-05-17 | 2028-05-24 |  |  |  |  |
| TC-8311 |  | Unit 1 First Spin and No-Load Run |  | 1d | 2028-05-17 | 2028-05-17 | TC-8202 | 2d | 0d |  |
| TC-8312 |  | Unit 1 Synchronization to Grid |  | 1d | 2028-05-18 | 2028-05-18 | TC-8311 | 2d | 0d |  |
| TC-8313 |  | Unit 1 Load Rejection and Performance Tests |  | 3d | 2028-05-19 | 2028-05-21 | TC-8312 | 2d | 0d |  |
| TC-8314 |  | Unit 1 Reliability Run (72 hours) |  | 3d | 2028-05-22 | 2028-05-24 | TC-8313 | 39d | 114d |  |

| ID | WBS | Activity | Duration | Start | Finish | Predecessors | Total float | Free float |
| --- | --- | --- | --- | --- | --- | --- | --- | --- |
|  | 2 | **Unit 2 Commissioning** |  | 2028-05-22 | 2028-05-29 |  |  |  |
| TC-8321 |  | Unit 2 First Spin and No-Load Run | 1d | 2028-05-22 | 2028-05-22 | TC-8313 | 2d | 0d |
| TC-8322 |  | Unit 2 Synchronization to Grid | 1d | 2028-05-23 | 2028-05-23 | TC-8321 | 2d | 0d |
| TC-8323 |  | Unit 2 Load Rejection and Performance Tests | 3d | 2028-05-24 | 2028-05-26 | TC-8322 | 2d | 0d |
| TC-8324 |  | Unit 2 Reliability Run (72 hours) | 3d | 2028-05-27 | 2028-05-29 | TC-8323 | 34d | 109d |
|  | 3 | **Unit 3 Commissioning** |  | 2028-05-27 | 2028-06-03 |  |  |  |
| TC-8331 |  | Unit 3 First Spin and No-Load Run | 1d | 2028-05-27 | 2028-05-27 | TC-8323 | 2d | 0d |
| TC-8332 |  | Unit 3 Synchronization to Grid | 1d | 2028-05-28 | 2028-05-28 | TC-8331 | 2d | 0d |
| TC-8333 |  | Unit 3 Load Rejection and Performance Tests | 3d | 2028-05-29 | 2028-05-31 | TC-8332 | 2d | 0d |
| TC-8334 |  | Unit 3 Reliability Run (72 hours) | 3d | 2028-06-01 | 2028-06-03 | TC-8333 | 29d | 104d |
|  | 4 | **Unit 4 Commissioning** |  | 2028-06-01 | 2028-06-08 |  |  |  |
| TC-8341 |  | Unit 4 First Spin and No-Load Run | 1d | 2028-06-01 | 2028-06-01 | TC-8333 | 2d | 0d |
| TC-8342 |  | Unit 4 Synchronization to Grid | 1d | 2028-06-02 | 2028-06-02 | TC-8341 | 2d | 0d |
| TC-8343 |  | Unit 4 Load Rejection and Performance Tests | 3d | 2028-06-03 | 2028-06-05 | TC-8342 | 2d | 0d |
| TC-8344 |  | Unit 4 Reliability Run (72 hours) | 3d | 2028-06-06 | 2028-06-08 | TC-8343 | 24d | 99d |
|  | 5 | **Unit 5 Commissioning** |  | 2028-06-06 | 2028-06-13 |  |  |  |
| TC-8351 |  | Unit 5 First Spin and No-Load Run | 1d | 2028-06-06 | 2028-06-06 | TC-8343 | 2d | 0d |
| TC-8352 |  | Unit 5 Synchronization to Grid | 1d | 2028-06-07 | 2028-06-07 | TC-8351 | 2d | 0d |
| TC-8353 |  | Unit 5 Load Rejection and Performance Tests | 3d | 2028-06-08 | 2028-06-10 | TC-8352 | 2d | 0d |
| TC-8354 |  | Unit 5 Reliability Run (72 hours) | 3d | 2028-06-11 | 2028-06-13 | TC-8353 | 2d | 0d |
|  | 4 | **Integrated Plant Performance & Reliability Test** |  | 2028-05-17 | 2028-06-20 |  |  |  |
| TC-8402 |  | Environmental Monitoring (Noise, Vibration, Water Quality) during Operation | 15d | 2028-05-17 | 2028-05-31 | TC-8311 SS | 32d | 107d |
| TC-8401 |  | Integrated Plant Reliability Test (All Units at Full Load) | 7d | 2028-06-14 | 2028-06-20 | TC-8354 | 2d | 0d |
|  | 5 | **Final Documentation and Handover** |  | 2028-05-02 | 2028-06-30 |  |  |  |
| TC-8501 |  | Compilation of Test Records and Commissioning Dossier | 60d | 2028-05-02 | 2028-06-30 | TC-8101 SS | 2d | 77d |
| TC-8502 |  | Final Performance Acceptance Test (PAT) and Punch List Rectification | 10d | 2028-06-21 | 2028-06-30 | TC-8401 | 2d | 77d |
